# Carta Gantt_NMDv1.0

Schedule from MS Project, 2017-07-10 to 2018-08-10, status date 2009-12-06, costs in UF.
Banco Estado

## Calendars

- Estándar: Mon-Fri 09:00-13:00, 14:00-18:10; Sat-Sun off. Exceptions (off unless hours are given): 2017-08-15, 2017-09-18 to 2017-09-19, 2017-10-09, 2017-10-27, 2017-11-01, 2017-12-08, 2017-12-25, 2018-01-01, 2018-03-30, 2018-05-01, 2018-05-21, 2018-07-02, 2018-07-16.

## Resources

| Resource | Rate | Cost per use |
| --- | --- | --- |
| Mella Rojas Claudio Rene | 1.3 | 221 |
| proveedor-a-licitar |  |  |
| Anticoy Anticoy Hugo Eduardo |  |  |
| Olivares Herrera Solange Angelica |  |  |
| Torres Cerda Pedro Samuel |  |  |
| Gonzalez Calderon Patricio Ivan |  |  |
| Muñoz Espinoza Yanin Pamela |  |  |
| Menares Medina Claudio Emanuel |  |  |
| Meza Carrasco Cristian Eduardo |  |  |
| Tapia Lemoine Alen |  |  |
| Silva Oyarzun Jose Alfredo |  |  |
| Marin Iturriaga Enrique Renato |  |  |
| Daza Castillo Natalia Valeria |  |  |
| Soto Herboza Andres Esteban |  |  |
| Acuña Acosta Carlos Rodrigo |  |  |
| Mella Jofre Ana Ester |  |  |
| Concha Castillo Maria Del Pilar |  |  |
| Guitart Gutierrez Carla Alejandra |  |  |
| Ulloa Madariaga Bernardita Maria |  |  |
| Pacheco Manriquez Mauricio Andres |  |  |
| Cofre Gomez David Andres |  |  |
| Castillo Collado Cristian Rodrigo |  |  |
| Torres Soulari Litza |  |  |

## Schedule

| ID | WBS | Task | Type | Duration | Start | Finish | Predecessors | Total slack | Free slack | Constraint | Deadline | Resources | Work | Cost | Hitos |
| --- | --- | --- | --- | --- | --- | --- | --- | --- | --- | --- | --- | --- | --- | --- | --- |
| 1 | 1 | **Proyecto OMT 7819 CAP CO 002** |  | 276.23d | 2017-07-10 | 2018-08-10 |  | -273.96d | 0d |  |  |  | 5531.2h | 1,610.31 |  |
| 2 | 1.1 | Hito Inicio Proyecto [Componente Excelsys-VT] | milestone | 0d | 2017-07-10 | 2017-07-10 |  | -273.96d | 0d | start no earlier than 2017-07-10 |  |  |  |  | IP |
| 3 | 1.2 | **Dirección de Proyecto** |  | 276.23d | 2017-07-10 | 2018-08-10 |  | -273.96d | 0d |  |  |  | 1029.2h | 1,269.06 |  |
| 4 | 1.2.1 | Hito Inicio Dirección | milestone | 0d | 2017-07-10 | 2017-07-10 | 2 | 276.23d |  |  |  |  |  |  |  |
| 5 | 1.2.2 | Gestionar Proyecto |  | 227d | 2017-08-18 | 2018-07-12 | 2SS | -303.19d | 0d | finish no earlier than 2018-07-12 | 2017-05-03 | Mella Rojas Claudio Rene [25%] | 454h | 645.45 |  |
| 6 | 1.2.3 | Gestionar Alcance |  | 227d | 2017-08-18 | 2018-07-12 | 2SS | 0d |  | finish no earlier than 2018-07-12 |  | Mella Rojas Claudio Rene [10%] | 181.6h | 258.18 |  |
| 7 | 1.2.4 | Gestionar Riesgos y Problemas |  | 227d | 2017-08-18 | 2018-07-12 | 2SS | 0d |  | finish no earlier than 2018-07-12 |  | Mella Rojas Claudio Rene [10%] | 181.6h | 258.18 |  |
| 8 | 1.2.5 | Gestión Condiciones de Operación |  | 215d | 2017-07-24 | 2018-05-31 | 35 | 50.23d |  |  |  | Muñoz Espinoza Yanin Pamela [10%] | 172h |  |  |
| 9 | 1.2.6 | Gestionar Cierre |  | 20d | 2018-07-13 | 2018-08-10 | 5, 6, 7 | 0d |  |  |  | Mella Rojas Claudio Rene [25%] | 40h | 107.25 |  |
| 10 | 1.2.7 | Hito Fin Dirección | milestone | 0d | 2018-08-10 | 2018-08-10 | 5, 6, 7, 9, 8 | 0d |  |  |  |  |  |  |  |
| 11 | 1.3 | **Validación de Condiciones de Inicio** |  | 116d | 2017-07-10 | 2017-12-26 |  | 21.23d |  |  |  |  | 784h | 165.75 |  |
| 12 | 1.3.1 | Hito Inicio Validación de Condiciones de Inicio | milestone | 0d | 2017-07-10 | 2017-07-10 | 2 | 21.23d | 1d |  |  |  |  |  |  |
| 13 | 1.3.2 | **Validar Requerimiento de Negocio** |  | 115d | 2017-07-10 | 2017-12-26 |  | 160.23d | 0d |  |  |  | 754h | 97.5 |  |
| 14 | 1.3.2.1 | Validar Requerimiento de Negocio |  | 10d | 2017-07-10 | 2017-07-24 | 12 | 160.23d | 0d |  |  | Mella Rojas Claudio Rene [10%]; Castillo Collado Cristian Rodrigo [30%]; Torres Soulari Litza [30%] | 56h | 32.5 |  |
| 15 | 1.3.2.2 | **Definir Estándares de Desarrollo** |  | 10d | 2017-07-10 | 2017-07-24 |  | 265.23d |  |  |  |  | 40h |  |  |
| 16 | 1.3.2.2.1 | Identificar Estándares de Desarrollo |  | 10d | 2017-07-10 | 2017-07-24 | 12 | 265.23d |  |  |  | Soto Herboza Andres Esteban [25%] | 20h |  |  |
| 17 | 1.3.2.2.2 | Coordinar y Ejecutar Inducción de Estándares |  | 10d | 2017-07-10 | 2017-07-24 | 12 | 265.23d |  |  |  | Soto Herboza Andres Esteban [25%] | 20h |  |  |
| 18 | 1.3.2.3 | **Compras** |  | 105d | 2017-07-24 | 2017-12-26 |  | 160.23d |  |  |  |  | 658h | 65 |  |
| 19 | 1.3.2.3.1 | Generación Documentos de Compras |  | 10d | 2017-07-24 | 2017-08-07 | 14 | 160.23d | 0d |  |  | Mella Rojas Claudio Rene [10%] | 8h | 32.5 |  |
| 20 | 1.3.2.3.2 | Revisión/Aprobación Documentos de Compra |  | 10d | 2017-08-07 | 2017-08-22 | 19 | 160.23d | 0d |  |  | Mella Rojas Claudio Rene [10%] | 8h | 32.5 |  |
| 21 | 1.3.2.3.3 | Gestión Compras Software |  | 80d | 2017-08-22 | 2017-12-18 | 20 | 160.23d | 0d |  |  | Guitart Gutierrez Carla Alejandra [50%] | 320h |  |  |
| 22 | 1.3.2.3.4 | Gestión Compras Hardware |  | 80d | 2017-08-07 | 2017-12-01 | 36 | 170.23d | 10d |  |  | Guitart Gutierrez Carla Alejandra [50%] | 320h |  |  |
| 23 | 1.3.2.3.5 | Adjudicación Licitación |  | 5d | 2017-12-18 | 2017-12-26 | 21, 22 | 160.23d |  |  |  | Guitart Gutierrez Carla Alejandra [5%] | 2h |  |  |
| 24 | 1.3.3 | Hito Aprobación Definiciones y Alcance Concluido | milestone | 0d | 2017-12-26 | 2017-12-26 | 13 | 160.23d |  |  |  |  |  |  |  |

Notes:
- 1: 1.Historia de Actualización / Versión / Revisado por / Aprobado por / Fecha / Cambios realizados / 1.00 / Metodología / Área soporte al / 04/06/2010 / Versión Inicial / desarrollo y / metodología / ----------------------------------------------------------------------------------------------------------
- 5: Comentarios: Métricas de solución, Cuadro de Mando, Informe de Avance, Registro de Problemas
- 6: Comentarios: Plan de Trabajo, Informe de Evaluación, Plan de Mejoras Convenidas con el Evaluado
- 7: Comentarios: Informe de Estado de Proveedores,
- 9: Comentarios: Plan de Trabajo, Plan de Calidad, Informe de Resultados de Calidad
- 13: Comentarios: Tailoring Metodológico, plan de Trabajo, Definición de Alcance, Plan de Implementación, Registro de Riesgos del Proyecto, Estrategia de Pruebas, Estrategia de Implementación

| ID | WBS | Task | Type | Duration | Start | Finish | Predecessors | Total slack | Free slack | Resources | Work | Cost |
| --- | --- | --- | --- | --- | --- | --- | --- | --- | --- | --- | --- | --- |
| 25 | 1.3.4 | **Cierre Ajuste Metodológico** |  | 15d | 2017-07-10 | 2017-07-31 |  | 260.23d | 0d |  | 30h | 68.25 |
| 26 | 1.3.4.1 | Generar Presentación del Proyecto |  | 5d | 2017-07-10 | 2017-07-17 | 12 | 260.23d | 0d | Mella Rojas Claudio Rene [25%] | 10h | 68.25 |
| 27 | 1.3.4.2 | Reunión Cierre de Ajuste Metodológico |  | 5d | 2017-07-17 | 2017-07-24 | 26 | 260.23d | 0d | Daza Castillo Natalia Valeria [25%] | 10h |  |
| 28 | 1.3.4.3 | Aprobación Ajuste Metodológico |  | 5d | 2017-07-24 | 2017-07-31 | 27 | 260.23d |  | Daza Castillo Natalia Valeria [25%] | 10h |  |
| 29 | 1.3.5 | Hito Kick-Off del Proyecto Realizado | milestone | 0d | 2017-07-31 | 2017-07-31 | 25 | 260.23d |  |  |  |  |
| 30 | 1.3.6 | Hito Fin Validación de Condiciones de Inicio | milestone | 0d | 2017-12-26 | 2017-12-26 | 13, 25 | 160.23d |  |  |  |  |
| 31 | 1.4 | **Análisis** |  | 30d | 2017-07-10 | 2017-08-22 |  | 20.23d | 0d |  | 430h | 68.25 |
| 32 | 1.4.1 | Hito Inicio Análisis | milestone | 0d | 2017-07-10 | 2017-07-10 | 12 | 20.23d | 0d |  |  |  |
| 33 | 1.4.2 | Detallar Requerimientos Funcionales y No Funcionales |  | 20d | 2017-07-10 | 2017-08-07 | 32 | 245.23d | 0d | Olivares Herrera Solange Angelica | 160h |  |
| 34 | 1.4.3 | **Realizar Análisis de Arquitectura** |  | 20d | 2017-07-10 | 2017-08-07 |  | 20.23d | 0d |  | 160h |  |
| 35 | 1.4.3.1 | Realizar Cuestionario de Arquitectura Tecnológica |  | 10d | 2017-07-10 | 2017-07-24 | 32 | 20.23d | 0d | Gonzalez Calderon Patricio Ivan | 80h |  |
| 36 | 1.4.3.2 | Elaborar Documento de Arquitectura Tecnológica |  | 10d | 2017-07-24 | 2017-08-07 | 35 | 20.23d | 0d | Gonzalez Calderon Patricio Ivan | 80h |  |
| 37 | 1.4.4 | Hito Realización Inducción Estándar de Desarrollo | milestone | 0d | 2017-08-07 | 2017-08-07 | 34 | 255.23d |  |  |  |  |
| 38 | 1.4.5 | **Realizar Análisis de Impacto** |  | 10d | 2017-08-07 | 2017-08-22 |  | 245.23d | 0d |  | 110h | 68.25 |
| 39 | 1.4.5.1 | Realizar Análisis de Impacto |  | 10d | 2017-08-07 | 2017-08-22 | 33 | 245.23d |  | Acuña Acosta Carlos Rodrigo [25%]; Anticoy Anticoy Hugo Eduardo [25%]; Muñoz Espinoza Yanin Pamela [25%] | 60h |  |
| 40 | 1.4.5.2 | Elaborar Declaración de Impacto de Soporte |  | 10d | 2017-08-07 | 2017-08-22 | 34 | 245.23d |  | Muñoz Espinoza Yanin Pamela [25%] | 20h |  |
| 41 | 1.4.5.3 | Definir Estrategia de Toma de Control |  | 5d | 2017-08-07 | 2017-08-14 | 33 | 250.23d |  | proveedor-a-licitar [50%]; Mella Rojas Claudio Rene [25%] | 30h | 68.25 |
| 42 | 1.4.6 | Hito Evaluar Cumplimiento de Tiempos Comprometidos por la Iniciativa | milestone | 0d | 2017-08-22 | 2017-08-22 | 34, 38 | 245.23d |  |  |  |  |
| 43 | 1.4.7 | Hito Fin Análisis | milestone | 0d | 2017-08-22 | 2017-08-22 | 34, 38 | 245.23d |  |  |  |  |
| 44 | 1.5 | **Diseño** |  | 50d | 2017-08-07 | 2017-10-19 |  | 20.23d | 0d |  | 918h |  |
| 45 | 1.5.1 | Hito Inicio Diseño | milestone | 0d | 2017-08-07 | 2017-08-07 | 34 | 20.23d | 0d |  |  |  |
| 46 | 1.5.2 | Diseñar Documento Piezas de Software |  | 20d | 2017-08-07 | 2017-09-05 | 45 | 20.23d | 0d | Anticoy Anticoy Hugo Eduardo [30%]; proveedor-a-licitar | 208h |  |
| 47 | 1.5.3 | Elaborar Modelo de Datos e Implementar en Erwin |  | 15d | 2017-09-05 | 2017-09-27 | 46 | 20.23d | 0d | proveedor-a-licitar [30%]; Menares Medina Claudio Emanuel; Meza Carrasco Cristian Eduardo | 276h |  |
| 48 | 1.5.4 | **Realizar Diseños de Arquitectura** |  | 45d | 2017-08-07 | 2017-10-12 |  | 20.23d | 0d |  | 320h |  |
| 49 | 1.5.4.1 | Elaborar Documento Arquitectura Aplicativa |  | 15d | 2017-08-07 | 2017-08-29 | 46SS | 40.23d | 0d | Torres Cerda Pedro Samuel | 120h |  |
| 50 | 1.5.4.2 | Elaborar Documento Arquitectura Datos |  | 10d | 2017-09-27 | 2017-10-12 | 47 | 20.23d |  | Meza Carrasco Cristian Eduardo | 80h |  |
| 51 | 1.5.4.3 | Elaborar Documento de Arquitectura Tecnológica |  | 10d | 2017-08-29 | 2017-09-12 | 49 | 40.23d |  | Gonzalez Calderon Patricio Ivan | 80h |  |
| 52 | 1.5.4.4 | Elaborar Documento de Arquitectura de Seguridad |  | 5d | 2017-08-29 | 2017-09-05 | 49 | 45.23d |  | Tapia Lemoine Alen | 40h |  |
| 53 | 1.5.5 | Crear Planes de Prueba |  | 20d | 2017-08-07 | 2017-09-05 | 34 | 50.23d |  | Anticoy Anticoy Hugo Eduardo [30%] | 48h |  |
| 54 | 1.5.6 | Preparar Ambiente de Desarrollo |  | 20d | 2017-08-07 | 2017-09-05 | 34 | 50.23d |  | Muñoz Espinoza Yanin Pamela [15%] | 24h |  |
| 55 | 1.5.7 | Elaborar orígenes de datos de prueba, |  | 5d | 2017-08-07 | 2017-08-14 | 34 | 60.23d | 0d | Muñoz Espinoza Yanin Pamela [25%] | 10h |  |
| 56 | 1.5.8 | Diseñar Plan de Capacitación y Comunicación |  | 5d | 2017-08-14 | 2017-08-22 | 55 | 60.23d |  | proveedor-a-licitar [50%] | 20h |  |
| 57 | 1.5.9 | Plan de Introducción al Servicio |  | 5d | 2017-10-12 | 2017-10-19 | 48 | 20.23d | 0d | Muñoz Espinoza Yanin Pamela [30%] | 12h |  |
| 58 | 1.5.10 | Hito Fin Diseño | milestone | 0d | 2017-10-19 | 2017-10-19 | 57 | 20.23d |  |  |  |  |

Notes:
- 42: El Objetivo de este Hito es realizar una evaluación del Alcance de la iniciativa y determinar si los Tiempos y Recursos comprometidos se cumplen. Dado que tras finalizar la Etapa de Análisis se tiene un mayor conocimiento del Alcance real de la Iniciativa, al analizar todos los requerimientos identificados

| ID | WBS | Task | Type | Duration | Start | Finish | Predecessors | Total slack | Free slack | Resources | Work | Cost |
| --- | --- | --- | --- | --- | --- | --- | --- | --- | --- | --- | --- | --- |
| 59 | 1.6 | **Construcción** |  | 40d | 2017-10-19 | 2017-12-18 |  | 20.23d | 0d |  | 980h | 107.25 |
| 60 | 1.6.1 | Hito Inicio Construcción | milestone | 0d | 2017-10-19 | 2017-10-19 | 44 | 20.23d | 0d |  |  |  |
| 61 | 1.6.2 | **Instalación Hardware** |  | 40d | 2017-10-19 | 2017-12-18 |  | 20.23d |  |  | 240h |  |
| 62 | 1.6.2.1 | Hito Inicio Instalación | milestone | 0d | 2017-10-19 | 2017-10-19 | 60 | 20.23d | 0d |  |  |  |
| 63 | 1.6.2.2 | Instalación Hardware |  | 20d | 2017-10-19 | 2017-11-20 | 62 | 20.23d | 0d | Silva Oyarzun Jose Alfredo | 160h |  |
| 64 | 1.6.2.3 | Habilitación Servidores |  | 20d | 2017-11-20 | 2017-12-18 | 63 | 20.23d | 0d | Soto Herboza Andres Esteban [50%] | 80h |  |
| 65 | 1.6.2.4 | Hito Fin Instalación | milestone | 0d | 2017-12-18 | 2017-12-18 | 64 | 20.23d |  |  |  |  |
| 66 | 1.6.3 | **Construir Piezas de Software** |  | 35d | 2017-10-19 | 2017-12-11 |  | 20.23d | 5d |  | 300h |  |
| 67 | 1.6.3.1 | Desarrollar Piezas de Software |  | 20d | 2017-10-19 | 2017-11-20 | 60 | 20.23d | 0d | proveedor-a-licitar [125%] | 200h |  |
| 68 | 1.6.3.2 | **Ejecutar Análisis Temprano de Seguridad en Desarrollo** |  | 15d | 2017-11-20 | 2017-12-11 |  | 20.23d | 0d |  | 100h |  |
| 69 | 1.6.3.2.1 | Instalar en Ambiente de Desarrollo |  | 5d | 2017-11-20 | 2017-11-27 | 67 | 20.23d | 0d | proveedor-a-licitar | 40h |  |
| 70 | 1.6.3.2.2 | Ejecutar Prueba Análisis Temprano de Seguridad en Desarrollo |  | 5d | 2017-11-27 | 2017-12-01 | 69 | 20.23d | 0d | Soto Herboza Andres Esteban [50%] | 20h |  |
| 71 | 1.6.3.2.3 | Corregir hallazgos Encontrados |  | 5d | 2017-12-01 | 2017-12-11 | 70 | 20.23d |  | proveedor-a-licitar | 40h |  |
| 72 | 1.6.4 | Construir Plan de Capacitación y Comunicación |  | 5d | 2017-12-11 | 2017-12-18 | 68 | 20.23d | 0d | proveedor-a-licitar | 40h |  |
| 73 | 1.6.5 | **Preparar Ambiente Pre Productivo** |  | 20d | 2017-10-19 | 2017-11-20 |  | 40.23d | 20d |  | 400h | 107.25 |
| 74 | 1.6.5.1 | Preparativos en Ambientes Pre Productivos |  | 20d | 2017-10-19 | 2017-11-20 | 60 | 40.23d |  | Acuña Acosta Carlos Rodrigo [50%]; Anticoy Anticoy Hugo Eduardo [50%]; Ulloa Madariaga Bernardita Maria [25%]; Soto Herboza Andres Esteban [25%] | 240h |  |
| 75 | 1.6.5.2 | Definir y Reservar Datos de Prueba |  | 20d | 2017-10-19 | 2017-11-20 | 60 | 40.23d |  | Acuña Acosta Carlos Rodrigo [50%]; Mella Rojas Claudio Rene [25%]; Anticoy Anticoy Hugo Eduardo [25%] | 160h | 107.25 |
| 76 | 1.6.6 | Hito Fin Construcción | milestone | 0d | 2017-12-18 | 2017-12-18 | 66, 73, 72 | 20.23d |  |  |  |  |
| 77 | 1.7 | **Pruebas** |  | 95d | 2017-12-18 | 2018-05-02 |  | 20.23d | 0d |  | 830h |  |
| 78 | 1.7.1 | Hito Inicio Pruebas | milestone | 0d | 2017-12-18 | 2017-12-18 | 59 | 20.23d | 0d |  |  |  |
| 79 | 1.7.2 | Derivar a Solicitud Paso a Producción |  | 20d | 2017-12-18 | 2018-01-17 | 78 | 20.23d | 0d | Acuña Acosta Carlos Rodrigo [25%]; Anticoy Anticoy Hugo Eduardo [25%] | 80h |  |
| 80 | 1.7.3 | **Ejecutar Pruebas No Funcionales** |  | 35d | 2018-01-17 | 2018-03-06 |  | 20.23d | 0d |  | 370h |  |
| 81 | 1.7.3.1 | Ejecutar Pruebas no Funcionales |  | 10d | 2018-01-17 | 2018-01-31 | 79 | 20.23d | 0d | Mella Jofre Ana Ester | 80h |  |
| 82 | 1.7.3.2 | Pruebas de Stress |  | 10d | 2018-01-31 | 2018-02-13 | 81 | 20.23d | 0d | Acuña Acosta Carlos Rodrigo [50%]; Anticoy Anticoy Hugo Eduardo [50%]; Mella Jofre Ana Ester | 160h |  |
| 83 | 1.7.3.3 | Ejecutar Prueba Análisis Temprano de Seguridad en Pruebas |  | 5d | 2018-02-13 | 2018-02-20 | 82 | 20.23d | 0d | Ulloa Madariaga Bernardita Maria [25%] | 10h |  |
| 84 | 1.7.3.4 | Corregir Hallazgos Encontrados |  | 10d | 2018-02-20 | 2018-03-06 | 83 | 20.23d |  | proveedor-a-licitar [150%] | 120h |  |

| ID | WBS | Task | Type | Duration | Start | Finish | Predecessors | Total slack | Free slack | Resources | Work |
| --- | --- | --- | --- | --- | --- | --- | --- | --- | --- | --- | --- |
| 85 | 1.7.4 | **Ejecutar Pruebas Funcionales** |  | 40d | 2018-03-06 | 2018-05-02 |  | 20.23d | 0d |  | 380h |
| 86 | 1.7.4.1 | Preparar ambiente de Pre-Producción |  | 10d | 2018-03-06 | 2018-03-20 | 80 | 20.23d | 0d | Ulloa Madariaga Bernardita Maria [25%]; Soto Herboza Andres Esteban [25%]; Pacheco Manriquez Mauricio Andres [25%]; Guitart Gutierrez Carla Alejandra [25%] | 80h |
| 87 | 1.7.4.2 | Ejecutar Pruebas Funcionales |  | 10d | 2018-03-20 | 2018-04-04 | 86 | 20.23d | 0d | proveedor-a-licitar [150%]; Acuña Acosta Carlos Rodrigo [25%] | 140h |
| 88 | 1.7.4.3 | Corregir hallazgos Encontrados |  | 10d | 2018-04-04 | 2018-04-17 | 87 | 20.23d | 0d | proveedor-a-licitar | 80h |
| 89 | 1.7.4.4 | Ejecutar Pruebas de Vulnerabilidad |  | 10d | 2018-04-18 | 2018-05-02 | 88 | 20.23d |  | Concha Castillo Maria Del Pilar | 80h |
| 90 | 1.7.5 | Hito Fin Pruebas | milestone | 0d | 2018-05-02 | 2018-05-02 | 80, 85 | 20.23d |  |  |  |
| 91 | 1.8 | **Despliegue** |  | 50d | 2018-05-02 | 2018-07-12 |  | 20.23d |  |  | 560h |
| 92 | 1.8.1 | Hito Inicio Despliegue | milestone | 0d | 2018-05-02 | 2018-05-02 | 77 | 20.23d | 0d |  |  |
| 93 | 1.8.2 | Preparar Paso a Producción |  | 10d | 2018-05-02 | 2018-05-16 | 92 | 20.23d | 0d | proveedor-a-licitar | 80h |
| 94 | 1.8.3 | **Realizar Paso a Producción** |  | 40d | 2018-05-16 | 2018-07-12 | 93 | 20.23d | 0d |  | 480h |
| 95 | 1.8.3.1 | Servidores de Datos |  | 40d | 2018-05-16 | 2018-07-12 | 92 | 20.23d |  | Cofre Gomez David Andres [25%]; Muñoz Espinoza Yanin Pamela [25%] | 160h |
| 96 | 1.8.3.2 | Servidores web 2012 (iis) |  | 40d | 2018-05-16 | 2018-07-12 | 92 | 20.23d |  | Cofre Gomez David Andres [25%]; Muñoz Espinoza Yanin Pamela [25%] | 160h |
| 97 | 1.8.3.3 | Comunicaciones (balanceador) |  | 40d | 2018-05-16 | 2018-07-12 | 92 | 20.23d |  | Cofre Gomez David Andres [25%] | 80h |
| 98 | 1.8.3.4 | Ejecutar Plan Capacitación y Comunicación |  | 10d | 2018-05-16 | 2018-05-31 | 92 | 50.23d |  | Marin Iturriaga Enrique Renato | 80h |
| 99 | 1.8.4 | Hito Fin Despliegue | milestone | 0d | 2018-07-12 | 2018-07-12 | 94 | 20.23d |  |  |  |
| 100 | 1.9 | **HITOS DE PAGO** |  | 0d | 2017-08-22 | 2017-08-22 |  | 245.23d |  |  |  |
| 101 | 1.9.1 | Hito Inicio Pagos | milestone | 0d | 2017-08-22 | 2017-08-22 | 31 | 245.23d | 0d |  |  |
| 102 | 1.9.2 | EVENTO ORDEN PAGO – HITO x de y – FD-XXXX – Descripción entregable | milestone | 0d | 2017-08-22 | 2017-08-22 | 101 | 245.23d |  |  |  |
| 103 | 1.9.3 | Hito Fin Pagos | milestone | 0d | 2017-08-22 | 2017-08-22 | 101 | 245.23d |  |  |  |
| 104 | 1.10 | Hito Fin Proyecto | milestone | 0d | 2018-08-10 | 2018-08-10 | 9 | 0d |  |  |  |

Notes:
- 94: Incluye: / Servidores de Datos / Servidores web 2012 (iis) / Comunicaciones (balanceador)
- 102: X es el numero de hito de la FD / y es el total de hitos de la FD / Descripción entregable es lo que se declaro en la FD como entregable para ese hito.
